# DPM Initial Gantt Chart

Schedule from GanttProject, 2017-10-15 to 2017-12-01.
Holidays every year on 01-01, 06-24, 07-01, 12-25

## Calendars

- Project calendar: Mon-Sun working.

## Resources

| Resource | Group | Rate |
| --- | --- | --- |
| Andi-Camille Bakti | Documentation Manager | 9 |
| Bill Zhang | Software Lead Designer | 9 |
| Claire Liu | Hardware Lead Designer | 9 |
| Edward Son | Testing Manager | 9 |
| Gabriel Negash |  | 9 |

## Schedule

| ID | WBS | Task | Type | Duration | Start | Finish | Predecessors | Complete | Constraint | Resources |
| --- | --- | --- | --- | --- | --- | --- | --- | --- | --- | --- |
| 1 | 1 | Project Kickoff |  | 1d | 2017-10-15 | 2017-10-15 |  |  | start no earlier than 2017-10-15 |  |
| 2 | 2 | Initial versions of 4 main docs |  | 1d | 2017-10-16 | 2017-10-16 | 1 | 100% |  | Andi-Camille Bakti [50%]; Bill Zhang [50%]; Claire Liu [50%]; Edward Son [50%]; Gabriel Negash [50%] |
| 3 | 3 | Preliminary design ideas |  | 1d | 2017-10-16 | 2017-10-16 | 1 | 100% |  | Andi-Camille Bakti [50%]; Bill Zhang [50%]; Claire Liu [50%]; Edward Son [50%]; Gabriel Negash [50%] |
| 4 | 4 | First Design Meeting | milestone | 0d | 2017-10-17 | 2017-10-17 | 2, 3 |  |  |  |
| 5 | 5 | Documentation, budget updates |  | 4d | 2017-10-20 | 2017-10-23 | 4 | 100% |  | Andi-Camille Bakti [12%]; Gabriel Negash [6%] |
| 6 | 6 | **Mechanical Design Proposal** |  | 7d | 2017-10-17 | 2017-10-23 | 4 | 100% |  |  |
| 7 | 6.1 | Initial Hardware Design |  | 2d | 2017-10-17 | 2017-10-18 |  | 100% |  | Andi-Camille Bakti [11%]; Bill Zhang [11%]; Claire Liu [39%]; Edward Son [11%]; Gabriel Negash [22%] |
| 8 | 6.2 | Hardware Design Documentation |  | 5d | 2017-10-19 | 2017-10-23 | 7 | 100% |  | Andi-Camille Bakti [10%]; Claire Liu [22%] |
| 9 | 7 | **Software Architecture** |  | 7d | 2017-10-17 | 2017-10-23 | 4 | 100% |  |  |
| 10 | 7.1 | Software Design |  | 1d | 2017-10-17 | 2017-10-17 | 4 | 100% | start no earlier than 2017-10-17 | Andi-Camille Bakti [6%]; Bill Zhang [6%]; Edward Son [6%]; Gabriel Negash [6%] |
| 11 | 7.2 | Software Build |  | 3d | 2017-10-18 | 2017-10-20 | 10 | 100% |  | Andi-Camille Bakti [28%]; Bill Zhang [22%]; Edward Son [22%]; Gabriel Negash [28%] |
| 12 | 7.3 | Software Refactor |  | 2d | 2017-10-22 | 2017-10-23 | 11FS+1d | 100% |  | Andi-Camille Bakti [12%]; Bill Zhang [12%]; Edward Son [12%] |
| 13 | 7.4 | Software class hierarchy |  | 2d | 2017-10-22 | 2017-10-23 | 11FS+1d | 100% |  | Bill Zhang [22%] |
| 14 | 8 | **Lab 5** |  | 7d | 2017-10-17 | 2017-10-23 |  | 100% |  |  |
| 15 | 8.1 | Lab 5 Design & Hardware Build |  | 2d | 2017-10-17 | 2017-10-18 |  | 100% | start no earlier than 2017-10-17 |  |
| 16 | 8.2 | Lab 5 Software Build & Preliminary Testing |  | 3d | 2017-10-18 | 2017-10-20 |  | 100% |  |  |
| 17 | 8.3 | Lab 5 Testing |  | 2d | 2017-10-22 | 2017-10-23 |  | 100% |  |  |
| 18 | 9 | Second Design Meeting & Lab 5 Demo | milestone | 0d | 2017-10-24 | 2017-10-24 | 5, 8, 12, 17 |  |  |  |
| 19 | 10 | Group Meeting |  | 1d | 2017-10-26 | 2017-10-26 |  | 100% |  | Andi-Camille Bakti [17%]; Bill Zhang [11%]; Claire Liu [17%]; Edward Son [17%]; Gabriel Negash [22%] |
| 20 | 11 | **Choose Mechanical Design** |  | 4d | 2017-10-26 | 2017-10-29 | 18 | 100% |  |  |
| 21 | 11.1 | Hardware Refactor Design |  | 2d | 2017-10-26 | 2017-10-27 | 18 | 100% |  | Andi-Camille Bakti [11%]; Claire Liu [33%]; Gabriel Negash [11%] |
| 22 | 11.2 | LDD |  | 1d | 2017-10-28 | 2017-10-28 | 21 | 100% |  | Claire Liu [33%] |
| 23 | 11.3 | Documentations |  | 1d | 2017-10-29 | 2017-10-29 | 22 | 100% |  | Andi-Camille Bakti [17%]; Claire Liu [11%] |
| 24 | 12 | Software Architecture |  | 2d | 2017-10-27 | 2017-10-28 | 13FS+3d | 100% |  | Bill Zhang [33%] |
| 25 | 13 | Testing Plan Documentation |  | 2d | 2017-10-29 | 2017-10-30 | 24 | 100% |  |  |
| 26 | 14 | Third Design Meeting | milestone | 0d | 2017-10-31 | 2017-10-31 | 6, 9, 20, 23, 24 |  |  |  |

| ID | WBS | Task | Type | Duration | Start | Finish | Predecessors | Complete | Constraint | Resources | Cost |
| --- | --- | --- | --- | --- | --- | --- | --- | --- | --- | --- | --- |
| 27 | 15 | **Software Sprint 3 - Beta Completion** |  | 7d | 2017-10-29 | 2017-11-04 |  | 85% |  |  |  |
| 28 | 15.1 | Software Build |  | 3d | 2017-10-29 | 2017-10-31 | 24 | 81% |  | Andi-Camille Bakti [22%]; Bill Zhang [66%]; Edward Son [11%]; Gabriel Negash [11%] |  |
| 29 | 15.2 | Software Refactor |  | 1d | 2017-11-04 | 2017-11-04 | 30 | 100% |  | Bill Zhang [17%] |  |
| 30 | 16 | Hardware Testing |  | 3d | 2017-11-01 | 2017-11-03 | 25, 28 | 100% |  | Andi-Camille Bakti [22%]; Claire Liu [77%]; Edward Son [55%] |  |
| 31 | 17 | Software Documentation Update |  | 1d | 2017-11-05 | 2017-11-05 |  | 100% |  | Andi-Camille Bakti [11%]; Bill Zhang [33%] |  |
| 32 | 18 | Beta demo preparation Meeting |  | 1d | 2017-11-05 | 2017-11-05 | 29 | 100% |  |  |  |
| 33 | 19 | Fourth Design Meeting | milestone | 0d | 2017-11-07 | 2017-11-07 | 27FS+2d, 32FS+1d |  |  |  |  |
| 34 | 20 | Software Refactor |  | 3d | 2017-11-07 | 2017-11-09 | 33 | 100% |  | Andi-Camille Bakti [66%]; Bill Zhang [66%]; Gabriel Negash [66%] |  |
| 35 | 21 | Beta Component Testing |  | 2d | 2017-11-08 | 2017-11-09 |  | 100% |  | Claire Liu [44%]; Edward Son [44%] |  |
| 36 | 22 | Beta Integration Testing |  | 4d | 2017-11-09 | 2017-11-12 | 33FS+2d | 100% |  | Claire Liu [55%]; Edward Son [88%] |  |
| 37 | 23 | Full Documentation Revision |  | 2d | 2017-11-12 | 2017-11-13 | 34FS+2d | 100% |  | Andi-Camille Bakti [77%]; Gabriel Negash [55%] |  |
| 38 | 24 | Milestone 1 - Beta Demonstration | milestone | 0d | 2017-11-14 | 2017-11-14 | 32FS+7d, 37 |  |  |  |  |
| 39 | 25 | Development of Checklist |  | 2d | 2017-11-14 | 2017-11-15 | 38 | 100% |  | Gabriel Negash [11%] |  |
| 40 | 26 | Phase 1 poster design |  | 2d | 2017-11-18 | 2017-11-19 | 37FS+4d, 38 | 100% |  | Andi-Camille Bakti [66%]; Gabriel Negash [33%] |  |
| 41 | 27 | Beta Refactor |  | 2d | 2017-11-17 | 2017-11-18 | 45 | 100% |  | Bill Zhang [33%]; Gabriel Negash [33%] |  |
| 42 | 28 | Group Meeting |  | 1d | 2017-11-20 | 2017-11-20 |  | 100% |  | Andi-Camille Bakti [22%]; Bill Zhang [22%]; Claire Liu [22%]; Edward Son [22%]; Gabriel Negash [22%] |  |
| 43 | 29 | **Final Integation Testing** |  | 16d | 2017-11-08 | 2017-11-23 |  | 92% |  |  |  |
| 44 | 29.1 | Final Component Testing |  | 2d | 2017-11-08 | 2017-11-09 | 29FS+3d | 100% |  |  |  |
| 45 | 29.2 | Beta Analysis Testing |  | 1d | 2017-11-16 | 2017-11-16 | 38FS+2d | 100% |  | Bill Zhang [33%]; Edward Son [22%] |  |
| 46 | 29.3 | **Partial Integration Testing** |  | 6d | 2017-11-11 | 2017-11-16 | 44 | 81% |  |  |  |
| 47 | 29.3.1 | Localization |  | 1d | 2017-11-11 | 2017-11-11 |  | 100% |  |  |  |
| 48 | 29.3.2 | Localization + Navigation |  | 3d | 2017-11-12 | 2017-11-14 |  | 100% |  |  |  |
| 49 | 29.3.3 | Localization + Navigation + Capture |  | 2d | 2017-11-15 | 2017-11-16 |  | 45% |  | Claire Liu [33%] |  |
| 50 | 29.4 | Full Integration Testing |  | 7d | 2017-11-17 | 2017-11-23 | 46 | 100% |  | Bill Zhang [33%]; Claire Liu; Edward Son |  |
| 51 | 30 | Final Poster Design and Print |  | 4d | 2017-11-20 | 2017-11-23 | 40 | 100% |  | Andi-Camille Bakti; Gabriel Negash [77%] |  |
| 52 | 31 | Presentation Practice |  | 4d | 2017-11-20 | 2017-11-23 | 40 | 100% |  | Andi-Camille Bakti [22%]; Bill Zhang [33%]; Claire Liu [33%]; Edward Son [33%]; Gabriel Negash [22%] |  |
| 53 | 32 | Fifth Design Meeting | milestone | 0d | 2017-11-21 | 2017-11-21 | 38 |  |  |  |  |
| 54 | 33 | Final Demo | milestone | 0d | 2017-11-24 | 2017-11-24 | 43, 50, 51, 52 |  | start no earlier than 2017-04-05 |  |  |
| 55 | 34 | Final document preparation for submission |  | 7d | 2017-11-24 | 2017-11-30 | 54 | 100% |  | Andi-Camille Bakti; Bill Zhang; Claire Liu; Edward Son; Gabriel Negash | 100 |
| 56 | 35 | Final Class | milestone | 0d | 2017-12-01 | 2017-12-01 | 55 |  | start no earlier than 2017-04-07 |  |  |
